# Keystock VVV

Schedule from ProjectLibre, 2026-02-02 to 2026-05-26.

## Calendars

- Keystock Calendario: Mon-Fri 08:00-12:00, 13:00-17:00; Sat-Sun off. Exceptions (off unless hours are given): 2026-04-30 to 2026-05-01, 2026-05-04 to 2026-05-05.

## Resources

| Resource | Group | Rate |
| --- | --- | --- |
| No Asignado |  |  |
| Project Manager | Scrum Master / PM | 150 |
| Analista | Analisis | 120 |
| Backend Dev / DBA | Dev | 130 |
| Frontend Dev | Diseño | 110 |
| Tester | QA / Tester | 100 |

## Schedule

| ID | WBS | Task | Duration | Start | Finish | Predecessors | Baseline start | Baseline finish | Resources |
| --- | --- | --- | --- | --- | --- | --- | --- | --- | --- |
| 1 | 1 | **KEYSTOCK – Sistema Gestor de Inventario** | 80d | 2026-02-02 08:00 | 2026-05-26 17:00 |  | 2026-02-02 08:00 | 2026-05-15 17:00 |  |
| 2 | 1.1 | **Fase 0: Preparación y Análisis** | 6.75d | 2026-02-02 08:00 | 2026-02-10 15:00 |  | 2026-02-02 08:00 | 2026-02-10 15:00 |  |
| 3 | 1.1.1 | Reunión de arranque interna | 0.25d | 2026-02-02 08:00 | 2026-02-02 10:00 |  | 2026-02-02 08:00 | 2026-02-02 10:00 | Frontend Dev [25%]; Project Manager [25%]; Backend Dev / DBA [25%]; Analista [25%]; Tester [25%] |
| 4 | 1.1.2 | [SCRUM-175] Kickoff Meeting con cliente | 0.5d | 2026-02-02 10:00 | 2026-02-02 15:00 | 3 | 2026-02-02 10:00 | 2026-02-02 15:00 | Project Manager [50%]; Analista [50%] |
| 5 | 1.1.3 | [SCRUM-176] Entrevista y levantamiento requerimientos | 1.5d | 2026-02-02 15:00 | 2026-02-04 10:00 | 4 | 2026-02-02 15:00 | 2026-02-04 10:00 | Project Manager [50%]; Analista [50%] |
| 6 | 1.1.4 | [SCRUM-177] Análisis y priorización MoSCoW | 1d | 2026-02-04 10:00 | 2026-02-05 10:00 | 5 | 2026-02-04 10:00 | 2026-02-05 10:00 | Frontend Dev [20%]; Project Manager [20%]; Backend Dev / DBA [20%]; Analista [20%]; Tester [20%] |
| 7 | 1.1.5 | [SCRUM-178] Configuración herramientas (Jira/GitHub/SQL) | 0.5d | 2026-02-05 10:00 | 2026-02-05 15:00 | 6 | 2026-02-05 10:00 | 2026-02-05 15:00 | Frontend Dev [20%]; Project Manager [20%]; Backend Dev / DBA [20%]; Analista [20%]; Tester [20%] |
| 8 | 1.1.6 | [SCRUM-179] Diseño inicial Base de Datos | 1d | 2026-02-05 15:00 | 2026-02-06 15:00 | 7 | 2026-02-05 15:00 | 2026-02-06 15:00 | Backend Dev / DBA |
| 9 | 1.1.7 | [SCRUM-180] Definición arquitectura del sistema | 1d | 2026-02-06 15:00 | 2026-02-09 15:00 | 8 | 2026-02-06 15:00 | 2026-02-09 15:00 | Backend Dev / DBA |
| 10 | 1.1.8 | Reuniones diarias - fase 0 | 6d | 2026-02-02 15:00 | 2026-02-10 15:00 | 4 | 2026-02-02 15:00 | 2026-02-10 15:00 | Frontend Dev [0.62%]; Project Manager [0.62%]; Backend Dev / DBA [0.62%]; Analista [0.62%]; Tester [0.62%] |
| 11 | 1.1.9 | Reunion semanal S1 | 0.12d | 2026-02-09 15:00 | 2026-02-09 16:00 | 9 | 2026-02-09 15:00 | 2026-02-09 16:00 | Frontend Dev [20%]; Project Manager [20%]; Backend Dev / DBA [20%]; Analista [20%]; Tester [20%] |
| 12 | 1.1.10 | Reporte semanal S1 | 0.06d | 2026-02-09 16:00 | 2026-02-09 16:30 | 11 | 2026-02-09 16:00 | 2026-02-09 16:30 | Project Manager |
| 13 | 1.2 | **Sprint 1: Usuarios y Catálogo Base** | 18.62d | 2026-02-09 15:00 | 2026-03-06 11:00 |  | 2026-02-09 15:00 | 2026-03-04 11:00 |  |
| 14 | 1.2.1 | Sprint 1 Planning | 0.5d | 2026-02-09 15:00 | 2026-02-10 10:00 | 9 | 2026-02-09 15:00 | 2026-02-10 10:00 | Frontend Dev [20%]; Project Manager [20%]; Backend Dev / DBA [20%]; Analista [20%]; Tester [20%] |
| 15 | 1.2.2 | **SCRUM-1: Login y autenticación** | 4.5d | 2026-02-10 10:00 | 2026-02-16 15:00 |  | 2026-02-10 10:00 | 2026-02-13 15:00 |  |
| 16 | 1.2.2.1 | [SCRUM-50] Crear tabla Usuarios SQL Server | 0.5d | 2026-02-10 10:00 | 2026-02-10 15:00 | 14 | 2026-02-10 10:00 | 2026-02-10 15:00 | Backend Dev / DBA |
| 17 | 1.2.2.2 | [SCRUM-49] Crear modelo Usuario | 0.5d | 2026-02-10 15:00 | 2026-02-11 10:00 | 16 | 2026-02-10 15:00 | 2026-02-11 10:00 | Backend Dev / DBA |
| 18 | 1.2.2.3 | [SCRUM-40] Configurar JWT | 0.5d | 2026-02-10 15:00 | 2026-02-11 10:00 | 16 | 2026-02-10 15:00 | 2026-02-11 10:00 | Backend Dev / DBA |
| 19 | 1.2.2.4 | [SCRUM-41] Crear endpoint login | 2d | 2026-02-11 10:00 | 2026-02-13 10:00 | 17, 18 | 2026-02-11 10:00 | 2026-02-12 10:00 | Backend Dev / DBA |
| 20 | 1.2.2.5 | [SCRUM-51] Implementar validación credenciales | 0.5d | 2026-02-13 10:00 | 2026-02-13 15:00 | 19 | 2026-02-12 10:00 | 2026-02-12 15:00 | Backend Dev / DBA |
| 21 | 1.2.2.6 | [SCRUM-54] Configurar almacenamiento Token | 0.25d | 2026-02-11 10:00 | 2026-02-11 13:00 | 18 | 2026-02-11 10:00 | 2026-02-11 13:00 | Backend Dev / DBA |
| 22 | 1.2.2.7 | [SCRUM-53] Implementar manejo sesiones | 0.5d | 2026-02-11 13:00 | 2026-02-11 17:00 | 21 | 2026-02-11 13:00 | 2026-02-11 17:00 | Backend Dev / DBA |
| 23 | 1.2.2.8 | [SCRUM-52] Crear pantalla Login React | 1d | 2026-02-13 10:00 | 2026-02-16 10:00 | 19 | 2026-02-12 10:00 | 2026-02-13 10:00 | Frontend Dev |
| 24 | 1.2.2.9 | [SCRUM-55] Implementar Logout | 0.5d | 2026-02-12 08:00 | 2026-02-12 13:00 | 22 | 2026-02-12 08:00 | 2026-02-12 13:00 | Backend Dev / DBA |
| 25 | 1.2.2.10 | [SCRUM-56] Testing Login | 0.5d | 2026-02-16 10:00 | 2026-02-16 15:00 | 20, 23, 24 | 2026-02-13 10:00 | 2026-02-13 15:00 | Tester |

| ID | WBS | Task | Duration | Start | Finish | Predecessors | Baseline start | Baseline finish | Resources |
| --- | --- | --- | --- | --- | --- | --- | --- | --- | --- |
| 26 | 1.2.3 | **SCRUM-2: CRUD de usuarios** | 2.75d | 2026-02-16 15:00 | 2026-02-19 13:00 |  | 2026-02-13 15:00 | 2026-02-18 13:00 |  |
| 27 | 1.2.3.1 | [SCRUM-45] Crear tabla usuarios (ajustes) | 0.25d | 2026-02-16 15:00 | 2026-02-16 17:00 | 25 | 2026-02-13 15:00 | 2026-02-13 17:00 | Backend Dev / DBA |
| 28 | 1.2.3.2 | [SCRUM-46] Crear tabla roles | 0.5d | 2026-02-16 15:00 | 2026-02-17 10:00 | 25 | 2026-02-13 15:00 | 2026-02-16 10:00 | Backend Dev / DBA |
| 29 | 1.2.3.3 | [SCRUM-61] Crear relación Usuario-Rol | 0.25d | 2026-02-17 10:00 | 2026-02-17 13:00 | 27, 28 | 2026-02-16 10:00 | 2026-02-16 13:00 | Backend Dev / DBA |
| 30 | 1.2.3.4 | [SCRUM-57] Crear endpoint obtener usuarios | 0.5d | 2026-02-17 13:00 | 2026-02-17 17:00 | 29 | 2026-02-16 13:00 | 2026-02-16 17:00 | Backend Dev / DBA |
| 31 | 1.2.3.5 | [SCRUM-58] Crear endpoint crear usuario | 0.5d | 2026-02-17 13:00 | 2026-02-17 17:00 | 29 | 2026-02-16 13:00 | 2026-02-16 17:00 | Backend Dev / DBA |
| 32 | 1.2.3.6 | [SCRUM-59] Crear endpoint editar usuario | 0.5d | 2026-02-17 13:00 | 2026-02-17 17:00 | 29 | 2026-02-16 13:00 | 2026-02-16 17:00 | Backend Dev / DBA |
| 33 | 1.2.3.7 | [SCRUM-60] Crear endpoint eliminar usuario | 0.5d | 2026-02-17 13:00 | 2026-02-17 17:00 | 29 | 2026-02-16 13:00 | 2026-02-16 17:00 | Backend Dev / DBA |
| 34 | 1.2.3.8 | [SCRUM-62] Validar duplicados email | 0.5d | 2026-02-18 08:00 | 2026-02-18 13:00 | 31 | 2026-02-17 08:00 | 2026-02-17 13:00 | Backend Dev / DBA |
| 35 | 1.2.3.9 | [SCRUM-44] Formulario React usuarios | 1d | 2026-02-18 08:00 | 2026-02-18 17:00 | 30 | 2026-02-17 08:00 | 2026-02-17 17:00 | Frontend Dev |
| 36 | 1.2.3.10 | [SCRUM-63] Testing CRUD usuarios | 0.5d | 2026-02-19 08:00 | 2026-02-19 13:00 | 32, 33, 34, 35 | 2026-02-18 08:00 | 2026-02-18 13:00 | Tester |
| 37 | 1.2.4 | **SCRUM-3: Roles y permisos** | 2.38d | 2026-02-19 13:00 | 2026-02-23 16:00 |  | 2026-02-18 13:00 | 2026-02-20 16:00 |  |
| 38 | 1.2.4.1 | [SCRUM-64] Crear rol Administrador | 0.12d | 2026-02-19 13:00 | 2026-02-19 14:00 | 36 | 2026-02-18 13:00 | 2026-02-18 14:00 | Backend Dev / DBA |
| 39 | 1.2.4.2 | [SCRUM-65] Crear rol Supervisor | 0.12d | 2026-02-19 13:00 | 2026-02-19 14:00 | 36 | 2026-02-18 13:00 | 2026-02-18 14:00 | Backend Dev / DBA |
| 40 | 1.2.4.3 | [SCRUM-66] Crear rol Jefe de Cocina | 0.12d | 2026-02-19 13:00 | 2026-02-19 14:00 | 36 | 2026-02-18 13:00 | 2026-02-18 14:00 | Backend Dev / DBA |
| 41 | 1.2.4.4 | [SCRUM-47] Crear Middleware autorización | 0.75d | 2026-02-19 14:00 | 2026-02-20 11:00 | 38, 39, 40 | 2026-02-18 14:00 | 2026-02-19 11:00 | Backend Dev / DBA |
| 42 | 1.2.4.5 | [SCRUM-48] Restricciones por rol | 0.5d | 2026-02-20 11:00 | 2026-02-20 16:00 | 41 | 2026-02-19 11:00 | 2026-02-19 16:00 | Backend Dev / DBA |
| 43 | 1.2.4.6 | [SCRUM-67] Validar acceso endpoints | 0.5d | 2026-02-20 16:00 | 2026-02-23 11:00 | 42 | 2026-02-19 16:00 | 2026-02-20 11:00 | Backend Dev / DBA |
| 44 | 1.2.4.7 | [SCRUM-68] Restringir vistas React | 0.5d | 2026-02-20 16:00 | 2026-02-23 11:00 | 42 | 2026-02-19 16:00 | 2026-02-20 11:00 | Frontend Dev |
| 45 | 1.2.4.8 | [SCRUM-69] Testing permisos | 0.5d | 2026-02-23 11:00 | 2026-02-23 16:00 | 43, 44 | 2026-02-20 11:00 | 2026-02-20 16:00 | Tester |
| 46 | 1.2.5 | **SCRUM-4: CRUD de insumos** | 5d | 2026-02-23 16:00 | 2026-03-02 16:00 |  | 2026-02-20 16:00 | 2026-02-26 16:00 |  |
| 47 | 1.2.5.1 | [SCRUM-70] Crear tabla Insumos | 0.5d | 2026-02-23 16:00 | 2026-02-24 11:00 | 45 | 2026-02-20 16:00 | 2026-02-23 11:00 | Backend Dev / DBA |
| 48 | 1.2.5.2 | [SCRUM-71] Endpoint crear insumo | 0.5d | 2026-02-24 11:00 | 2026-02-24 16:00 | 47 | 2026-02-23 11:00 | 2026-02-23 16:00 | Backend Dev / DBA |
| 49 | 1.2.5.3 | [SCRUM-72] Endpoint editar insumo | 0.5d | 2026-02-24 11:00 | 2026-02-24 16:00 | 47 | 2026-02-23 11:00 | 2026-02-23 16:00 | Backend Dev / DBA |
| 50 | 1.2.5.4 | [SCRUM-73] Endpoint eliminar insumo | 0.5d | 2026-02-24 11:00 | 2026-02-24 16:00 | 47 | 2026-02-23 11:00 | 2026-02-23 16:00 | Backend Dev / DBA |
| 51 | 1.2.5.5 | [SCRUM-74] Endpoint listar insumos | 0.5d | 2026-02-24 11:00 | 2026-02-24 16:00 | 47 | 2026-02-23 11:00 | 2026-02-23 16:00 | Backend Dev / DBA |
| 52 | 1.2.5.6 | [SCRUM-75] Formulario React insumos | 2.5d | 2026-02-24 16:00 | 2026-02-27 11:00 | 51 | 2026-02-23 16:00 | 2026-02-25 11:00 | Frontend Dev |
| 53 | 1.2.5.7 | [SCRUM-76] Implementar búsqueda insumos | 0.5d | 2026-02-24 16:00 | 2026-02-25 11:00 | 51 | 2026-02-23 16:00 | 2026-02-24 11:00 | Frontend Dev |
| 54 | 1.2.5.8 | [SCRUM-77] Validar campos obligatorios | 0.5d | 2026-02-24 16:00 | 2026-02-25 11:00 | 48, 49 | 2026-02-23 16:00 | 2026-02-24 11:00 | Backend Dev / DBA |
| 55 | 1.2.5.9 | [SCRUM-78] Implementar carga imágenes | 1d | 2026-02-27 11:00 | 2026-03-02 11:00 | 52 | 2026-02-25 11:00 | 2026-02-26 11:00 | Frontend Dev |
| 56 | 1.2.5.10 | [SCRUM-79] Testing CRUD insumos | 0.5d | 2026-03-02 11:00 | 2026-03-02 16:00 | 53, 54, 55 | 2026-02-26 11:00 | 2026-02-26 16:00 | Tester |
| 57 | 1.2.6 | Reuniones diarias S1,S2 | 10d | 2026-02-10 10:00 | 2026-02-24 10:00 | 14 | 2026-02-10 10:00 | 2026-02-24 10:00 | Frontend Dev [0.62%]; Project Manager [0.62%]; Backend Dev / DBA [0.62%]; Analista [0.62%]; Tester [0.62%] |
| 58 | 1.2.7 | Reuniones diarias S3 | 5d | 2026-02-24 10:00 | 2026-03-03 10:00 | 57 | 2026-02-24 10:00 | 2026-03-03 10:00 | Frontend Dev [0.62%]; Project Manager [0.62%]; Backend Dev / DBA [0.62%]; Analista [0.62%]; Tester [0.62%] |
| 59 | 1.2.8 | Reunion semanal S2 | 0.12d | 2026-02-17 10:00 | 2026-02-17 11:00 | 28 | 2026-02-16 10:00 | 2026-02-16 11:00 | Frontend Dev [20%]; Project Manager [20%]; Backend Dev / DBA [20%]; Analista [20%]; Tester [20%] |
| 60 | 1.2.9 | Reporte semanal S2 | 0.06d | 2026-02-17 11:00 | 2026-02-17 11:30 | 59 | 2026-02-16 11:00 | 2026-02-16 11:30 | Project Manager |
| 61 | 1.2.10 | Reunion semanal S3 | 0.12d | 2026-02-24 11:00 | 2026-02-24 13:00 | 47 | 2026-02-23 11:00 | 2026-02-23 13:00 | Frontend Dev [20%]; Project Manager [20%]; Backend Dev / DBA [20%]; Analista [20%]; Tester [20%] |
| 62 | 1.2.11 | Reporte semanal S3 | 0.06d | 2026-02-24 13:00 | 2026-02-24 13:30 | 61 | 2026-02-23 13:00 | 2026-02-23 13:30 | Project Manager |
| 63 | 1.2.12 | Reunion semanal S4 | 0.12d | 2026-03-04 16:00 | 2026-03-04 17:00 | 65 | 2026-03-02 16:00 | 2026-03-02 17:00 | Frontend Dev [20%]; Project Manager [20%]; Backend Dev / DBA [20%]; Analista [20%]; Tester [20%] |
| 64 | 1.2.13 | Reporte semanal S4 | 0.06d | 2026-03-05 08:00 | 2026-03-05 08:30 | 63 | 2026-03-03 08:00 | 2026-03-03 08:30 | Project Manager |
| 65 | 1.2.14 | Pruebas funcionales integradas Sprint 1 | 2d | 2026-03-02 16:00 | 2026-03-04 16:00 | 56 | 2026-02-26 16:00 | 2026-03-02 16:00 | Tester |
| 66 | 1.2.15 | Backlog Refinement Sprint 1 | 0.5d | 2026-03-04 16:00 | 2026-03-05 11:00 | 65 | 2026-03-02 16:00 | 2026-03-03 11:00 | Project Manager [50%]; Analista [50%] |
| 67 | 1.2.16 | Sprint 1 Review (Demo con cliente) | 0.5d | 2026-03-05 11:00 | 2026-03-05 16:00 | 66 | 2026-03-03 11:00 | 2026-03-03 16:00 | Frontend Dev [20%]; Project Manager [20%]; Backend Dev / DBA [20%]; Analista [20%]; Tester [20%] |
| 68 | 1.2.17 | Sprint 1 Retrospective | 0.5d | 2026-03-05 16:00 | 2026-03-06 11:00 | 67 | 2026-03-03 16:00 | 2026-03-04 11:00 | Frontend Dev [20%]; Project Manager [20%]; Backend Dev / DBA [20%]; Analista [20%]; Tester [20%] |

| ID | WBS | Task | Duration | Start | Finish | Predecessors | Baseline start | Baseline finish | Resources |
| --- | --- | --- | --- | --- | --- | --- | --- | --- | --- |
| 69 | 1.3 | **Sprint 2: Catálogos y Movimientos** | 29.62d | 2026-03-03 10:00 | 2026-04-13 16:00 |  | 2026-03-03 10:00 | 2026-04-07 10:00 |  |
| 70 | 1.3.1 | Sprint 2 Planning | 0.5d | 2026-03-05 16:00 | 2026-03-06 11:00 | 67 | 2026-03-03 16:00 | 2026-03-04 11:00 | Frontend Dev [20%]; Project Manager [20%]; Backend Dev / DBA [20%]; Analista [20%]; Tester [20%] |
| 71 | 1.3.2 | **SCRUM-5: CRUD de categorías** | 3.5d | 2026-03-06 11:00 | 2026-03-11 16:00 |  | 2026-03-04 11:00 | 2026-03-09 16:00 |  |
| 72 | 1.3.2.1 | [SCRUM-80] Crear tabla Categorías | 0.5d | 2026-03-06 11:00 | 2026-03-06 16:00 | 70 | 2026-03-04 11:00 | 2026-03-04 16:00 | Backend Dev / DBA |
| 73 | 1.3.2.2 | [SCRUM-81] Crear API categorías | 0.75d | 2026-03-06 16:00 | 2026-03-09 14:00 | 72 | 2026-03-04 16:00 | 2026-03-05 14:00 | Backend Dev / DBA |
| 74 | 1.3.2.3 | [SCRUM-82] Crear formulario categorías | 0.75d | 2026-03-09 14:00 | 2026-03-10 11:00 | 73 | 2026-03-05 14:00 | 2026-03-06 11:00 | Frontend Dev |
| 75 | 1.3.2.4 | [SCRUM-83] Implementar edición categorías | 0.5d | 2026-03-10 11:00 | 2026-03-10 16:00 | 74 | 2026-03-06 11:00 | 2026-03-06 16:00 | Frontend Dev |
| 76 | 1.3.2.5 | [SCRUM-84] Implementar eliminación categorías | 0.5d | 2026-03-10 16:00 | 2026-03-11 11:00 | 75 | 2026-03-06 16:00 | 2026-03-09 11:00 | Frontend Dev |
| 77 | 1.3.2.6 | [SCRUM-85] Validar duplicados | 0.25d | 2026-03-09 14:00 | 2026-03-09 16:00 | 73 | 2026-03-05 14:00 | 2026-03-05 16:00 | Backend Dev / DBA |
| 78 | 1.3.2.7 | [SCRUM-86] Testing categorías | 0.5d | 2026-03-11 11:00 | 2026-03-11 16:00 | 76, 77 | 2026-03-09 11:00 | 2026-03-09 16:00 | Tester |
| 79 | 1.3.3 | **SCRUM-6: CRUD de departamentos** | 3.5d | 2026-03-11 16:00 | 2026-03-17 11:00 |  | 2026-03-09 16:00 | 2026-03-13 11:00 |  |
| 80 | 1.3.3.1 | [SCRUM-87] Crear tabla Departamentos | 0.5d | 2026-03-11 16:00 | 2026-03-12 11:00 | 78 | 2026-03-09 16:00 | 2026-03-10 11:00 | Backend Dev / DBA |
| 81 | 1.3.3.2 | [SCRUM-88] Crear API departamentos | 0.75d | 2026-03-12 11:00 | 2026-03-13 09:00 | 80 | 2026-03-10 11:00 | 2026-03-11 09:00 | Backend Dev / DBA |
| 82 | 1.3.3.3 | [SCRUM-89] Crear formulario departamentos | 0.75d | 2026-03-13 09:00 | 2026-03-13 16:00 | 81 | 2026-03-11 09:00 | 2026-03-11 16:00 | Frontend Dev |
| 83 | 1.3.3.4 | [SCRUM-90] Implementar edición departamentos | 0.5d | 2026-03-13 16:00 | 2026-03-16 11:00 | 82 | 2026-03-11 16:00 | 2026-03-12 11:00 | Frontend Dev |
| 84 | 1.3.3.5 | [SCRUM-91] Implementar eliminación departamentos | 0.5d | 2026-03-16 11:00 | 2026-03-16 16:00 | 83 | 2026-03-12 11:00 | 2026-03-12 16:00 | Frontend Dev |
| 85 | 1.3.3.6 | [SCRUM-92] Validar dependencias | 0.5d | 2026-03-13 09:00 | 2026-03-13 14:00 | 81 | 2026-03-11 09:00 | 2026-03-11 14:00 | Backend Dev / DBA |
| 86 | 1.3.3.7 | [SCRUM-93] Testing departamentos | 0.5d | 2026-03-16 16:00 | 2026-03-17 11:00 | 84, 85 | 2026-03-12 16:00 | 2026-03-13 11:00 | Tester |
| 87 | 1.3.4 | **SCRUM-7: CRUD de proveedores** | 4.5d | 2026-03-17 11:00 | 2026-03-23 16:00 |  | 2026-03-13 11:00 | 2026-03-18 16:00 |  |
| 88 | 1.3.4.1 | [SCRUM-94] Crear tabla Proveedores | 0.5d | 2026-03-17 11:00 | 2026-03-17 16:00 | 86 | 2026-03-13 11:00 | 2026-03-13 16:00 | Backend Dev / DBA |
| 89 | 1.3.4.2 | [SCRUM-95] Crear relación proveedor-insumo | 0.5d | 2026-03-17 16:00 | 2026-03-18 11:00 | 88 | 2026-03-13 16:00 | 2026-03-16 11:00 | Backend Dev / DBA |
| 90 | 1.3.4.3 | [SCRUM-96] Crear API proveedores | 1.75d | 2026-03-18 11:00 | 2026-03-20 09:00 | 89 | 2026-03-16 11:00 | 2026-03-17 09:00 | Backend Dev / DBA |
| 91 | 1.3.4.4 | [SCRUM-97] Crear formulario proveedores | 0.75d | 2026-03-20 09:00 | 2026-03-20 16:00 | 90 | 2026-03-17 09:00 | 2026-03-17 16:00 | Frontend Dev |
| 92 | 1.3.4.5 | [SCRUM-98] Implementar búsqueda proveedores | 0.5d | 2026-03-20 16:00 | 2026-03-23 11:00 | 91 | 2026-03-17 16:00 | 2026-03-18 11:00 | Frontend Dev |
| 93 | 1.3.4.6 | [SCRUM-99] Validar teléfono/email | 0.5d | 2026-03-20 09:00 | 2026-03-20 14:00 | 90 | 2026-03-17 09:00 | 2026-03-17 14:00 | Backend Dev / DBA |
| 94 | 1.3.4.7 | [SCRUM-100] Testing proveedores | 0.5d | 2026-03-23 11:00 | 2026-03-23 16:00 | 92, 93 | 2026-03-18 11:00 | 2026-03-18 16:00 | Tester |

| ID | WBS | Task | Duration | Start | Finish | Predecessors | Baseline start | Baseline finish | Resources |
| --- | --- | --- | --- | --- | --- | --- | --- | --- | --- |
| 95 | 1.3.5 | **SCRUM-8: Entradas de inventario** | 2.75d | 2026-03-23 16:00 | 2026-03-26 14:00 |  | 2026-03-18 16:00 | 2026-03-23 14:00 |  |
| 96 | 1.3.5.1 | [SCRUM-101] Crear tabla Movimientos | 0.5d | 2026-03-23 16:00 | 2026-03-24 11:00 | 94 | 2026-03-18 16:00 | 2026-03-19 11:00 | Backend Dev / DBA |
| 97 | 1.3.5.2 | [SCRUM-102] Crear endpoint entradas | 0.75d | 2026-03-24 11:00 | 2026-03-25 09:00 | 96 | 2026-03-19 11:00 | 2026-03-20 09:00 | Backend Dev / DBA |
| 98 | 1.3.5.3 | [SCRUM-104] Actualizar stock automáticamente | 0.75d | 2026-03-25 09:00 | 2026-03-25 16:00 | 97 | 2026-03-20 09:00 | 2026-03-20 16:00 | Backend Dev / DBA |
| 99 | 1.3.5.4 | [SCRUM-105] Registrar usuario movimiento | 0.25d | 2026-03-25 09:00 | 2026-03-25 11:00 | 97 | 2026-03-20 09:00 | 2026-03-20 11:00 | Backend Dev / DBA |
| 100 | 1.3.5.5 | [SCRUM-106] Registrar fecha movimiento | 0.25d | 2026-03-25 09:00 | 2026-03-25 11:00 | 97 | 2026-03-20 09:00 | 2026-03-20 11:00 | Backend Dev / DBA |
| 101 | 1.3.5.6 | [SCRUM-107] Validar cantidades positivas | 0.25d | 2026-03-25 09:00 | 2026-03-25 11:00 | 97 | 2026-03-20 09:00 | 2026-03-20 11:00 | Backend Dev / DBA |
| 102 | 1.3.5.7 | [SCRUM-103] Crear formulario entradas | 1d | 2026-03-25 09:00 | 2026-03-26 09:00 | 97 | 2026-03-20 09:00 | 2026-03-23 09:00 | Frontend Dev |
| 103 | 1.3.5.8 | [SCRUM-108] Testing entradas | 0.5d | 2026-03-26 09:00 | 2026-03-26 14:00 | 98, 99, 100, 101, 102 | 2026-03-23 09:00 | 2026-03-23 14:00 | Tester |
| 104 | 1.3.6 | **SCRUM-9: Salidas de inventario** | 3.5d | 2026-03-26 14:00 | 2026-04-01 09:00 |  | 2026-03-23 14:00 | 2026-03-26 09:00 |  |
| 105 | 1.3.6.1 | [SCRUM-109] Crear endpoint salidas | 0.75d | 2026-03-26 14:00 | 2026-03-27 11:00 | 103 | 2026-03-23 14:00 | 2026-03-24 11:00 | Backend Dev / DBA |
| 106 | 1.3.6.2 | [SCRUM-111] Descontar stock automáticamente | 1.75d | 2026-03-27 11:00 | 2026-03-31 09:00 | 105 | 2026-03-24 11:00 | 2026-03-25 09:00 | Backend Dev / DBA |
| 107 | 1.3.6.3 | [SCRUM-112] Registrar motivo salida | 0.5d | 2026-03-27 11:00 | 2026-03-27 16:00 | 105 | 2026-03-24 11:00 | 2026-03-24 16:00 | Backend Dev / DBA |
| 108 | 1.3.6.4 | [SCRUM-114] Registrar auditoría salida | 0.5d | 2026-03-27 11:00 | 2026-03-27 16:00 | 105 | 2026-03-24 11:00 | 2026-03-24 16:00 | Backend Dev / DBA |
| 109 | 1.3.6.5 | [SCRUM-110] Crear formulario salidas | 1d | 2026-03-27 11:00 | 2026-03-30 11:00 | 105 | 2026-03-24 11:00 | 2026-03-25 11:00 | Frontend Dev |
| 110 | 1.3.6.6 | [SCRUM-113] Validar stock suficiente | 0.5d | 2026-03-31 09:00 | 2026-03-31 14:00 | 106 | 2026-03-25 09:00 | 2026-03-25 14:00 | Backend Dev / DBA |
| 111 | 1.3.6.7 | [SCRUM-115] Testing salidas | 0.5d | 2026-03-31 14:00 | 2026-04-01 09:00 | 107, 108, 109, 110 | 2026-03-25 14:00 | 2026-03-26 09:00 | Tester |
| 112 | 1.3.7 | **SCRUM-10: Ajustes con justificación** | 2.25d | 2026-04-01 09:00 | 2026-04-03 11:00 |  | 2026-03-26 09:00 | 2026-03-30 11:00 |  |
| 113 | 1.3.7.1 | [SCRUM-116] Crear módulo ajustes | 0.75d | 2026-04-01 09:00 | 2026-04-01 16:00 | 111 | 2026-03-26 09:00 | 2026-03-26 16:00 | Backend Dev / DBA |
| 114 | 1.3.7.2 | [SCRUM-117] Registrar justificación obligatoria | 0.5d | 2026-04-01 16:00 | 2026-04-02 11:00 | 113 | 2026-03-26 16:00 | 2026-03-27 11:00 | Backend Dev / DBA |
| 115 | 1.3.7.3 | [SCRUM-118] Registrar historial ajustes | 0.5d | 2026-04-01 16:00 | 2026-04-02 11:00 | 113 | 2026-03-26 16:00 | 2026-03-27 11:00 | Backend Dev / DBA |
| 116 | 1.3.7.4 | [SCRUM-119] Validar permisos ajustes | 0.25d | 2026-04-01 16:00 | 2026-04-02 09:00 | 113 | 2026-03-26 16:00 | 2026-03-27 09:00 | Backend Dev / DBA |
| 117 | 1.3.7.5 | [SCRUM-120] Actualizar stock ajuste | 0.5d | 2026-04-02 11:00 | 2026-04-02 16:00 | 114 | 2026-03-27 11:00 | 2026-03-27 16:00 | Backend Dev / DBA |
| 118 | 1.3.7.6 | [SCRUM-121] Crear reporte ajustes | 0.5d | 2026-04-02 11:00 | 2026-04-02 16:00 | 115 | 2026-03-27 11:00 | 2026-03-27 16:00 | Backend Dev / DBA |
| 119 | 1.3.7.7 | [SCRUM-122] Testing ajustes | 0.5d | 2026-04-02 16:00 | 2026-04-03 11:00 | 116, 117, 118 | 2026-03-27 16:00 | 2026-03-30 11:00 | Tester |

| ID | WBS | Task | Duration | Start | Finish | Predecessors | Baseline start | Baseline finish | Resources |
| --- | --- | --- | --- | --- | --- | --- | --- | --- | --- |
| 120 | 1.3.8 | **SCRUM-11: Validar stock disponible** | 3d | 2026-04-03 11:00 | 2026-04-08 11:00 |  | 2026-03-30 11:00 | 2026-04-01 11:00 |  |
| 121 | 1.3.8.1 | [SCRUM-123] Crear validador central de stock | 0.5d | 2026-04-03 11:00 | 2026-04-03 16:00 | 119 | 2026-03-30 11:00 | 2026-03-30 16:00 | Frontend Dev [50%]; Backend Dev / DBA [50%] |
| 122 | 1.3.8.2 | [SCRUM-124] Registrar excepciones stock | 1.5d | 2026-04-03 16:00 | 2026-04-07 11:00 | 121 | 2026-03-30 16:00 | 2026-03-31 11:00 | Backend Dev / DBA |
| 123 | 1.3.8.3 | [SCRUM-125] Registrar historial validaciones | 0.5d | 2026-04-03 16:00 | 2026-04-06 11:00 | 121 | 2026-03-30 16:00 | 2026-03-31 11:00 | Backend Dev / DBA |
| 124 | 1.3.8.4 | [SCRUM-126] Validar permisos validación | 0.25d | 2026-04-03 16:00 | 2026-04-06 09:00 | 121 | 2026-03-30 16:00 | 2026-03-31 09:00 | Backend Dev / DBA |
| 125 | 1.3.8.5 | [SCRUM-127] Bloquear operaciones sin stock | 0.5d | 2026-04-07 11:00 | 2026-04-07 16:00 | 122 | 2026-03-31 11:00 | 2026-03-31 16:00 | Backend Dev / DBA |
| 126 | 1.3.8.6 | [SCRUM-128] Crear reporte validaciones | 0.5d | 2026-04-06 11:00 | 2026-04-06 16:00 | 123 | 2026-03-31 11:00 | 2026-03-31 16:00 | Frontend Dev |
| 127 | 1.3.8.7 | [SCRUM-129] Testing validación stock | 0.5d | 2026-04-07 16:00 | 2026-04-08 11:00 | 124, 125, 126 | 2026-03-31 16:00 | 2026-04-01 11:00 | Tester |
| 128 | 1.3.9 | Reuniones diarias S4 | 5d | 2026-03-03 10:00 | 2026-03-10 10:00 | 58 | 2026-03-03 10:00 | 2026-03-10 10:00 | Analista [0.62%]; Backend Dev / DBA [0.62%]; Frontend Dev [0.62%]; Project Manager [0.62%]; Tester [0.62%] |
| 129 | 1.3.10 | Reuniones diarias S5,S6 | 10d | 2026-03-10 10:00 | 2026-03-24 10:00 | 128 | 2026-03-10 10:00 | 2026-03-24 10:00 | Frontend Dev [0.62%]; Project Manager [0.62%]; Backend Dev / DBA [0.62%]; Analista [0.62%]; Tester [0.62%] |
| 130 | 1.3.11 | Reuniones diarias S7,S8 | 10d | 2026-03-24 10:00 | 2026-04-07 10:00 | 129 | 2026-03-24 10:00 | 2026-04-07 10:00 | Frontend Dev [0.62%]; Project Manager [0.62%]; Backend Dev / DBA [0.62%]; Analista [0.62%]; Tester [0.62%] |
| 131 | 1.3.12 | Reunion semanal S5 | 0.12d | 2026-03-11 16:00 | 2026-03-11 17:00 | 78 | 2026-03-09 16:00 | 2026-03-09 17:00 | Frontend Dev [20%]; Project Manager [20%]; Backend Dev / DBA [20%]; Analista [20%]; Tester [20%] |
| 132 | 1.3.13 | Reporte semanal S5 | 0.06d | 2026-03-12 08:00 | 2026-03-12 08:30 | 131 | 2026-03-10 08:00 | 2026-03-10 08:30 | Project Manager |
| 133 | 1.3.14 | Reunion semanal S6 | 0.12d | 2026-03-18 11:00 | 2026-03-18 13:00 | 89 | 2026-03-16 11:00 | 2026-03-16 13:00 | Frontend Dev [20%]; Project Manager [20%]; Backend Dev / DBA [20%]; Analista [20%]; Tester [20%] |
| 134 | 1.3.15 | Reporte semanal S6 | 0.06d | 2026-03-18 13:00 | 2026-03-18 13:30 | 133 | 2026-03-16 13:00 | 2026-03-16 13:30 | Project Manager |
| 135 | 1.3.16 | Reunion semanal S7 | 0.03d | 2026-03-26 09:00 | 2026-03-26 09:11 | 102 | 2026-03-23 09:00 | 2026-03-23 09:11 | Frontend Dev [20%]; Project Manager [20%]; Backend Dev / DBA [20%]; Analista [20%]; Tester [20%] |
| 136 | 1.3.17 | Reporte semanal S7 | 0.06d | 2026-03-26 09:11 | 2026-03-26 09:41 | 135 | 2026-03-23 09:11 | 2026-03-23 09:41 | Project Manager |
| 137 | 1.3.18 | Reunion semanal S7 | 0.12d | 2026-04-03 11:00 | 2026-04-03 13:00 | 119 | 2026-03-30 11:00 | 2026-03-30 13:00 | Frontend Dev [20%]; Project Manager [20%]; Backend Dev / DBA [20%]; Analista [20%]; Tester [20%] |
| 138 | 1.3.19 | Reporte semanal S7 | 0.06d | 2026-04-03 13:00 | 2026-04-03 13:30 | 137 | 2026-03-30 13:00 | 2026-03-30 13:30 | Project Manager |
| 139 | 1.3.20 | Pruebas funcionales integradas Sprint 2 | 2d | 2026-04-08 11:00 | 2026-04-10 11:00 | 127 | 2026-04-01 11:00 | 2026-04-03 11:00 | Tester |
| 140 | 1.3.21 | Backlog Refinement Sprint 2 | 0.5d | 2026-04-10 11:00 | 2026-04-10 16:00 | 139 | 2026-04-03 11:00 | 2026-04-03 16:00 | Project Manager [50%]; Analista [50%] |
| 141 | 1.3.22 | Sprint 2 Review (Demo con cliente) | 0.5d | 2026-04-10 16:00 | 2026-04-13 11:00 | 140 | 2026-04-03 16:00 | 2026-04-06 11:00 | Frontend Dev [20%]; Project Manager [20%]; Backend Dev / DBA [20%]; Analista [20%]; Tester [20%] |
| 142 | 1.3.23 | Sprint 2 Retrospective | 0.5d | 2026-04-13 11:00 | 2026-04-13 16:00 | 141 | 2026-04-06 11:00 | 2026-04-06 16:00 | Frontend Dev [20%]; Project Manager [20%]; Backend Dev / DBA [20%]; Analista [20%]; Tester [20%] |
| 143 | 1.4 | **Sprint 3: Reportes, QA e Implementación** | 29.75d | 2026-04-07 10:00 | 2026-05-20 17:00 |  | 2026-04-03 16:00 | 2026-05-11 17:00 |  |
| 144 | 1.4.1 | Sprint 3 Planning | 0.5d | 2026-04-10 16:00 | 2026-04-13 11:00 | 140 | 2026-04-03 16:00 | 2026-04-06 11:00 | Frontend Dev [20%]; Project Manager [20%]; Backend Dev / DBA [20%]; Analista [20%]; Tester [20%] |

| ID | WBS | Task | Duration | Start | Finish | Predecessors | Baseline start | Baseline finish | Resources |
| --- | --- | --- | --- | --- | --- | --- | --- | --- | --- |
| 145 | 1.4.2 | **SCRUM-12: Reportes dinámicos** | 3.5d | 2026-04-13 11:00 | 2026-04-16 16:00 |  | 2026-04-06 11:00 | 2026-04-09 16:00 |  |
| 146 | 1.4.2.1 | [SCRUM-130] Crear consultas reportes | 1d | 2026-04-13 11:00 | 2026-04-14 11:00 | 144 | 2026-04-06 11:00 | 2026-04-07 11:00 | Backend Dev / DBA |
| 147 | 1.4.2.2 | [SCRUM-131] Implementar filtros fechas | 0.5d | 2026-04-14 11:00 | 2026-04-14 16:00 | 146 | 2026-04-07 11:00 | 2026-04-07 16:00 | Backend Dev / DBA |
| 148 | 1.4.2.3 | [SCRUM-132] Implementar filtros categorías | 0.5d | 2026-04-14 11:00 | 2026-04-14 16:00 | 146 | 2026-04-07 11:00 | 2026-04-07 16:00 | Backend Dev / DBA |
| 149 | 1.4.2.4 | [SCRUM-133] Implementar filtros departamentos | 0.5d | 2026-04-14 11:00 | 2026-04-14 16:00 | 146 | 2026-04-07 11:00 | 2026-04-07 16:00 | Backend Dev / DBA |
| 150 | 1.4.2.5 | [SCRUM-135] Optimizar consultas SQL | 0.75d | 2026-04-14 16:00 | 2026-04-15 14:00 | 147, 148, 149 | 2026-04-07 16:00 | 2026-04-08 14:00 | Backend Dev / DBA |
| 151 | 1.4.2.6 | [SCRUM-134] Crear vista reportes React | 1.5d | 2026-04-14 16:00 | 2026-04-16 11:00 | 147, 148, 149 | 2026-04-07 16:00 | 2026-04-09 11:00 | Frontend Dev |
| 152 | 1.4.2.7 | [SCRUM-136] Testing reportes | 0.5d | 2026-04-16 11:00 | 2026-04-16 16:00 | 150, 151 | 2026-04-09 11:00 | 2026-04-09 16:00 | Tester |
| 153 | 1.4.3 | **SCRUM-14: Dashboard KPIs** | 3.5d | 2026-04-16 16:00 | 2026-04-22 11:00 |  | 2026-04-09 16:00 | 2026-04-15 11:00 |  |
| 154 | 1.4.3.1 | [SCRUM-143] Crear dashboard principal | 1d | 2026-04-16 16:00 | 2026-04-17 16:00 | 152 | 2026-04-09 16:00 | 2026-04-10 16:00 | Frontend Dev |
| 155 | 1.4.3.2 | [SCRUM-144] Mostrar stock crítico | 0.5d | 2026-04-17 16:00 | 2026-04-20 11:00 | 154 | 2026-04-10 16:00 | 2026-04-13 11:00 | Frontend Dev |
| 156 | 1.4.3.3 | [SCRUM-145] Mostrar total inventario | 0.5d | 2026-04-17 16:00 | 2026-04-20 11:00 | 154 | 2026-04-10 16:00 | 2026-04-13 11:00 | Frontend Dev |
| 157 | 1.4.3.4 | [SCRUM-146] Mostrar productos rotación | 0.5d | 2026-04-17 16:00 | 2026-04-20 11:00 | 154 | 2026-04-10 16:00 | 2026-04-13 11:00 | Frontend Dev |
| 158 | 1.4.3.5 | [SCRUM-147] Crear gráficas estadísticas | 1d | 2026-04-20 11:00 | 2026-04-21 11:00 | 155, 156, 157 | 2026-04-13 11:00 | 2026-04-14 11:00 | Frontend Dev |
| 159 | 1.4.3.6 | [SCRUM-148] Optimizar carga dashboard | 0.5d | 2026-04-21 11:00 | 2026-04-21 16:00 | 158 | 2026-04-14 11:00 | 2026-04-14 16:00 | Backend Dev / DBA |
| 160 | 1.4.3.7 | [SCRUM-149] Testing dashboard | 0.5d | 2026-04-21 16:00 | 2026-04-22 11:00 | 158, 159 | 2026-04-14 16:00 | 2026-04-15 11:00 | Tester |
| 161 | 1.4.4 | **SCRUM-13: Exportación PDF y Excel** | 2.75d | 2026-04-22 11:00 | 2026-04-27 09:00 |  | 2026-04-15 11:00 | 2026-04-20 09:00 |  |
| 162 | 1.4.4.1 | [SCRUM-137] Implementar exportación Excel | 1d | 2026-04-22 11:00 | 2026-04-23 11:00 | 160 | 2026-04-15 11:00 | 2026-04-16 11:00 | Backend Dev / DBA |
| 163 | 1.4.4.2 | [SCRUM-138] Implementar exportación PDF | 1d | 2026-04-22 11:00 | 2026-04-23 11:00 | 160 | 2026-04-15 11:00 | 2026-04-16 11:00 | Backend Dev / DBA |
| 164 | 1.4.4.3 | [SCRUM-139] Crear formato reportes | 0.5d | 2026-04-23 11:00 | 2026-04-23 16:00 | 163, 162 | 2026-04-16 11:00 | 2026-04-16 16:00 | Frontend Dev |
| 165 | 1.4.4.4 | [SCRUM-140] Agregar logotipo empresa | 0.25d | 2026-04-23 16:00 | 2026-04-24 09:00 | 164 | 2026-04-16 16:00 | 2026-04-17 09:00 | Frontend Dev |
| 166 | 1.4.4.5 | [SCRUM-141] Validar descargas | 0.5d | 2026-04-24 09:00 | 2026-04-24 14:00 | 165 | 2026-04-17 09:00 | 2026-04-17 14:00 | Backend Dev / DBA |
| 167 | 1.4.4.6 | [SCRUM-142] Testing exportaciones | 0.5d | 2026-04-24 14:00 | 2026-04-27 09:00 | 166 | 2026-04-17 14:00 | 2026-04-20 09:00 | Tester |
| 168 | 1.4.5 | **SCRUM-15: Alertas de stock crítico** | 2.25d | 2026-04-27 09:00 | 2026-04-29 11:00 |  | 2026-04-20 09:00 | 2026-04-22 11:00 |  |
| 169 | 1.4.5.1 | [SCRUM-150] Configurar niveles mínimos | 0.5d | 2026-04-27 09:00 | 2026-04-27 14:00 | 167 | 2026-04-20 09:00 | 2026-04-20 14:00 | Backend Dev / DBA |
| 170 | 1.4.5.2 | [SCRUM-151] Detectar stock crítico | 0.75d | 2026-04-27 14:00 | 2026-04-28 11:00 | 169 | 2026-04-20 14:00 | 2026-04-21 11:00 | Backend Dev / DBA |
| 171 | 1.4.5.3 | [SCRUM-152] Mostrar alertas dashboard | 0.5d | 2026-04-28 11:00 | 2026-04-28 16:00 | 170 | 2026-04-21 11:00 | 2026-04-21 16:00 | Frontend Dev |
| 172 | 1.4.5.4 | [SCRUM-153] Mostrar notificaciones sistema | 0.5d | 2026-04-28 11:00 | 2026-04-28 16:00 | 170 | 2026-04-21 11:00 | 2026-04-21 16:00 | Frontend Dev |
| 173 | 1.4.5.5 | [SCRUM-154] Registrar historial alertas | 0.5d | 2026-04-28 11:00 | 2026-04-28 16:00 | 170 | 2026-04-21 11:00 | 2026-04-21 16:00 | Backend Dev / DBA |
| 174 | 1.4.5.6 | [SCRUM-155] Testing alertas | 0.5d | 2026-04-28 16:00 | 2026-04-29 11:00 | 171, 172, 173 | 2026-04-21 16:00 | 2026-04-22 11:00 | Tester |

| ID | WBS | Task | Duration | Start | Finish | Predecessors | Baseline start | Baseline finish | Resources |
| --- | --- | --- | --- | --- | --- | --- | --- | --- | --- |
| 175 | 1.4.6 | **SCRUM-16: Pruebas funcionales integrales** | 6.12d | 2026-04-29 11:00 | 2026-05-11 13:00 |  | 2026-04-22 11:00 | 2026-04-28 16:00 |  |
| 176 | 1.4.6.1 | [SCRUM-156] Probar autenticación | 0.5d | 2026-04-29 11:00 | 2026-04-29 16:00 | 174 | 2026-04-22 11:00 | 2026-04-22 16:00 | Tester |
| 177 | 1.4.6.2 | [SCRUM-157] Probar CRUDs | 0.75d | 2026-04-29 16:00 | 2026-04-30 14:00 | 176 | 2026-04-22 16:00 | 2026-04-23 14:00 | Tester |
| 178 | 1.4.6.3 | [SCRUM-158] Probar inventario | 1.75d | 2026-04-30 14:00 | 2026-05-04 11:00 | 177 | 2026-04-23 14:00 | 2026-04-24 11:00 | Tester |
| 179 | 1.4.6.4 | [SCRUM-159] Probar reportes | 0.75d | 2026-05-04 11:00 | 2026-05-05 09:00 | 178 | 2026-04-24 11:00 | 2026-04-27 09:00 | Tester |
| 180 | 1.4.6.5 | [SCRUM-160] Documentar bugs | 1.5d | 2026-05-06 08:00 | 2026-05-07 13:00 | 179 | 2026-04-27 09:00 | 2026-04-27 14:00 | Tester |
| 181 | 1.4.6.6 | [SCRUM-161] Validar correcciones | 1.5d | 2026-05-07 13:00 | 2026-05-08 17:00 | 180 | 2026-04-27 14:00 | 2026-04-28 11:00 | Frontend Dev [50%]; Backend Dev / DBA [50%] |
| 182 | 1.4.6.7 | [SCRUM-162] Testing regresión | 0.5d | 2026-05-11 08:00 | 2026-05-11 13:00 | 181 | 2026-04-28 11:00 | 2026-04-28 16:00 | Tester |
| 183 | 1.4.7 | **SCRUM-18: Deploy a producción** | 2.5d | 2026-05-11 13:00 | 2026-05-13 17:00 |  | 2026-04-28 16:00 | 2026-05-01 11:00 |  |
| 184 | 1.4.7.1 | [SCRUM-163] Configurar hosting Somee | 0.5d | 2026-05-11 13:00 | 2026-05-11 17:00 | 182 | 2026-04-28 16:00 | 2026-04-29 11:00 | Backend Dev / DBA |
| 185 | 1.4.7.2 | [SCRUM-164] Configurar SQL Server producción | 0.5d | 2026-05-12 08:00 | 2026-05-12 13:00 | 184 | 2026-04-29 11:00 | 2026-04-29 16:00 | Backend Dev / DBA |
| 186 | 1.4.7.3 | [SCRUM-165] Desplegar Backend ASP.NET | 0.75d | 2026-05-12 13:00 | 2026-05-13 10:00 | 185 | 2026-04-29 16:00 | 2026-04-30 14:00 | Backend Dev / DBA |
| 187 | 1.4.7.4 | [SCRUM-166] Desplegar Frontend React | 0.5d | 2026-05-12 13:00 | 2026-05-12 17:00 | 185 | 2026-04-29 16:00 | 2026-04-30 11:00 | Frontend Dev |
| 188 | 1.4.7.5 | [SCRUM-167] Configurar dominio | 0.25d | 2026-05-13 10:00 | 2026-05-13 13:00 | 186, 187 | 2026-04-30 14:00 | 2026-04-30 16:00 | Backend Dev / DBA |
| 189 | 1.4.7.6 | [SCRUM-168] Configurar respaldos | 0.5d | 2026-05-13 13:00 | 2026-05-13 17:00 | 188 | 2026-04-30 16:00 | 2026-05-01 11:00 | Backend Dev / DBA |
| 190 | 1.4.8 | **SCRUM-17: Capacitación al personal** | 3.5d | 2026-05-14 08:00 | 2026-05-19 13:00 |  | 2026-05-04 08:00 | 2026-05-08 13:00 |  |
| 191 | 1.4.8.1 | [SCRUM-169] Crear manual usuario | 1d | 2026-05-14 08:00 | 2026-05-14 17:00 | 189 | 2026-05-04 08:00 | 2026-05-04 17:00 | Analista |
| 192 | 1.4.8.2 | [SCRUM-170] Crear guía rápida PDF | 0.5d | 2026-05-15 08:00 | 2026-05-15 13:00 | 191 | 2026-05-06 08:00 | 2026-05-06 13:00 | Analista |
| 193 | 1.4.8.3 | [SCRUM-171] Preparar ejemplos reales | 0.5d | 2026-05-15 13:00 | 2026-05-15 17:00 | 192 | 2026-05-06 13:00 | 2026-05-06 17:00 | Project Manager [50%]; Analista [50%] |
| 194 | 1.4.8.4 | [SCRUM-172] Capacitación presencial | 1d | 2026-05-18 08:00 | 2026-05-18 17:00 | 189, 193 | 2026-05-07 08:00 | 2026-05-07 17:00 | Project Manager [50%]; Analista [50%] |
| 195 | 1.4.8.5 | [SCRUM-173] Resolver dudas usuarios | 0.25d | 2026-05-19 08:00 | 2026-05-19 10:00 | 194 | 2026-05-08 08:00 | 2026-05-08 10:00 | Project Manager [50%]; Analista [50%] |
| 196 | 1.4.8.6 | [SCRUM-174] Obtener retroalimentación | 0.25d | 2026-05-19 10:00 | 2026-05-19 13:00 | 195 | 2026-05-08 10:00 | 2026-05-08 13:00 | Project Manager |
| 197 | 1.4.9 | Reuniones diarias S9.10 | 10d | 2026-04-07 10:00 | 2026-04-21 10:00 | 130 | 2026-04-07 10:00 | 2026-04-21 10:00 | Frontend Dev [0.62%]; Project Manager [0.62%]; Backend Dev / DBA [0.62%]; Analista [0.62%]; Tester [0.62%] |
| 198 | 1.4.10 | Reuniones diarias S11.12 | 8.75d | 2026-04-21 10:00 | 2026-05-05 10:00 | 197 | 2026-04-21 10:00 | 2026-05-05 10:00 | Frontend Dev [0.62%]; Project Manager [0.62%]; Backend Dev / DBA [0.62%]; Analista [0.62%]; Tester [0.62%] |
| 199 | 1.4.11 | Reunion semanal S8 | 0.12d | 2026-04-14 11:00 | 2026-04-14 13:00 | 146 | 2026-04-07 11:00 | 2026-04-07 13:00 | Frontend Dev [20%]; Project Manager [20%]; Backend Dev / DBA [20%]; Analista [20%]; Tester [20%] |
| 200 | 1.4.12 | Reporte semanal S8 | 0.06d | 2026-04-14 13:00 | 2026-04-14 13:30 | 199 | 2026-04-07 13:00 | 2026-04-07 13:30 | Project Manager |
| 201 | 1.4.13 | Reunion semanal S9 | 0.12d | 2026-04-21 11:00 | 2026-04-21 13:00 | 158 | 2026-04-14 11:00 | 2026-04-14 13:00 | Frontend Dev [20%]; Project Manager [20%]; Backend Dev / DBA [20%]; Analista [20%]; Tester [20%] |
| 202 | 1.4.14 | Reporte semanal S9 | 0.06d | 2026-04-21 13:00 | 2026-04-21 13:30 | 201 | 2026-04-14 13:00 | 2026-04-14 13:30 | Project Manager |
| 203 | 1.4.15 | Reunion semanal S10 | 0.12d | 2026-04-28 11:00 | 2026-04-28 13:00 | 170 | 2026-04-21 11:00 | 2026-04-21 13:00 | Frontend Dev [20%]; Project Manager [20%]; Backend Dev / DBA [20%]; Analista [20%]; Tester [20%] |
| 204 | 1.4.16 | Reporte semanal S10 | 0.06d | 2026-04-28 13:00 | 2026-04-28 13:30 | 203 | 2026-04-21 13:00 | 2026-04-21 13:30 | Project Manager |
| 205 | 1.4.17 | Reunion semanal S11 | 0.12d | 2026-05-11 13:00 | 2026-05-11 14:00 | 182 | 2026-04-28 16:00 | 2026-04-28 17:00 | Frontend Dev [20%]; Project Manager [20%]; Backend Dev / DBA [20%]; Analista [20%]; Tester [20%] |
| 206 | 1.4.18 | Reporte semanal S11 | 0.06d | 2026-05-11 14:00 | 2026-05-11 14:30 | 205 | 2026-04-29 08:00 | 2026-04-29 08:30 | Project Manager |
| 207 | 1.4.19 | Reunion semanal S12 | 0.12d | 2026-05-19 13:00 | 2026-05-19 14:00 | 196 | 2026-05-08 13:00 | 2026-05-08 14:00 | Frontend Dev [20%]; Project Manager [20%]; Backend Dev / DBA [20%]; Analista [20%]; Tester [20%] |
| 208 | 1.4.20 | Reporte semanal S12 | 0.06d | 2026-05-19 14:00 | 2026-05-19 14:30 | 207 | 2026-05-08 14:00 | 2026-05-08 14:30 | Project Manager |
| 209 | 1.4.21 | Backlog Refinement Sprint 3 | 0.5d | 2026-05-19 13:00 | 2026-05-19 17:00 | 196 | 2026-05-08 13:00 | 2026-05-08 17:00 | Project Manager [50%]; Analista [50%] |
| 210 | 1.4.22 | Sprint 3 Review – Demo Final | 0.5d | 2026-05-20 08:00 | 2026-05-20 13:00 | 209 | 2026-05-11 08:00 | 2026-05-11 13:00 | Frontend Dev [20%]; Project Manager [20%]; Backend Dev / DBA [20%]; Analista [20%]; Tester [20%] |
| 211 | 1.4.23 | Sprint 3 Retrospective | 0.5d | 2026-05-20 13:00 | 2026-05-20 17:00 | 210 | 2026-05-11 13:00 | 2026-05-11 17:00 | Frontend Dev [20%]; Project Manager [20%]; Backend Dev / DBA [20%]; Analista [20%]; Tester [20%] |

| ID | WBS | Task | Duration | Start | Finish | Predecessors | Baseline start | Baseline finish | Resources |
| --- | --- | --- | --- | --- | --- | --- | --- | --- | --- |
| 212 | 1.5 | **Cierre y Entrega Final** | 4d | 2026-05-21 08:00 | 2026-05-26 17:00 |  | 2026-05-12 08:00 | 2026-05-15 17:00 |  |
| 213 | 1.5.1 | Reunion de Cierre Interna | 0.25d | 2026-05-21 08:00 | 2026-05-21 10:00 | 211 | 2026-05-12 08:00 | 2026-05-12 10:00 | Frontend Dev [20%]; Project Manager [20%]; Backend Dev / DBA [20%]; Analista [20%]; Tester [20%] |
| 214 | 1.5.2 | Documentación técnica final | 1.5d | 2026-05-21 08:00 | 2026-05-22 13:00 | 211 | 2026-05-12 08:00 | 2026-05-13 13:00 | Backend Dev / DBA [50%]; Analista [50%] |
| 215 | 1.5.3 | Buffer para correcciones de última hora | 1.5d | 2026-05-22 13:00 | 2026-05-25 17:00 | 214 | 2026-05-13 13:00 | 2026-05-14 17:00 | Frontend Dev [20%]; Project Manager [20%]; Backend Dev / DBA [20%]; Analista [20%]; Tester [20%] |
| 216 | 1.5.4 | Entrega formal al cliente | 1d | 2026-05-26 08:00 | 2026-05-26 17:00 | 215 | 2026-05-15 08:00 | 2026-05-15 17:00 | Project Manager |
